# IWB 项目进度

Schedule from a web Gantt chart, 2025-03-05 to 2025-03-21.
Sundays are off

## Schedule

| ID | WBS | Task | Type | Duration | Start | Finish | Predecessors | Complete | inPeople | Status |
| --- | --- | --- | --- | --- | --- | --- | --- | --- | --- | --- |
| 2 | 1 | **整机样品采购，拆机学习** | fixed start | 1d | 2025-03-05 | 2025-03-05 |  | 100% |  |  |
| 3 | 1.1 | 55，65，75，86整机采购 | fixed start, fixed end | 1d | 2025-03-05 | 2025-03-05 |  | 100% | 研发，采购 |  |
| 4 | 2 | **55，86样品自组装（确认精确BOM，编制SOP）** |  | 15d | 2025-03-05 | 2025-03-21 |  | 41% | 研发，采购 |  |
| 5 | 2.1 | 55嘀嗒背光采购，功能确认 |  | 1d | 2025-03-05 | 2025-03-05 |  | 100% | 研发，采购 |  |
| 6 | 2.2 | 86嘀嗒背光采购，功能确认 |  | 3d | 2025-03-05 | 2025-03-07 |  | 50% | 研发，采购 |  |
| 7 | 2.3 | 55型材设计打样（增加摄像头，NFC），功能确认 |  | 15d | 2025-03-05 | 2025-03-21 |  | 50% | 研发，采购 |  |
| 8 | 2.4 | 86型材设计打样（增加NFC)，功能确认 |  | 15d | 2025-03-05 | 2025-03-21 |  | 50% | 研发，采购 |  |
| 9 | 2.5 | 55结构件设计打样（五金挡板，转接板等），功能确认 |  | 7d | 2025-03-05 | 2025-03-12 |  | 50% | 研发，采购 |  |
| 10 | 2.6 | 4800摄像头+8阵列 样品采购，功能确认 |  | 1d | 2025-03-05 | 2025-03-05 |  | 100% | 研发，采购 |  |
| 11 | 2.7 | 55 液晶玻璃样品采购，功能确认 |  | 1d | 2025-03-05 | 2025-03-05 |  | 100% | 研发，采购 |  |
| 12 | 2.8 | 86 液晶玻璃样品采购，功能确认 |  | 1d | 2025-03-05 | 2025-03-05 |  | 100% | 研发，采购 |  |
| 13 | 2.9 | 主板，电源板，NFC OPS接口 样品采购，功能确认 |  | 1d | 2025-03-05 | 2025-03-05 |  | 100% | 研发，采购 |  |
| 14 | 2.10 | 机内线材确认以及打样，功能确认 |  | 10d | 2025-03-05 | 2025-03-15 |  |  | 研发，采购 |  |
| 15 | 2.11 | 55，86 触摸条 样品采购，功能确认 |  | 5d | 2025-03-05 | 2025-03-10 |  | 80% | 研发，采购 |  |
| 16 | 2.12 | 55，86 钢化玻璃 样品采购，功能确认 |  | 10d | 2025-03-06 | 2025-03-17 |  |  | 研发，采购 |  |
| 17 | 2.13 | 55，86 样品组装确认 |  | 1d | 2025-03-06 | 2025-03-06 | 10 |  |  | waiting |
| 18 | 3 | 精确BOM编制 |  | 3d | 2025-03-08 | 2025-03-11 | 6 |  | 研发 | waiting |
| 19 | 4 | SOP编制 |  | 5d | 2025-03-05 | 2025-03-10 |  |  | 研发 |  |

Notes:
- 3: 已到位
- 5: 已到位
- 10: 已到 2套样品，先测试适配
- 11: 已到位
- 12: 已到位
- 13: 已到一套样品，先适配
- 14: 机内所有线材
- 15: 永创利已经提供各2套样品；华欣55的尺寸做不到我们要求的，可提供86的测试效果
